Schedule from MS Project, 2015-12-07 to 2016-02-09, A marks actual dates.

## Calendars

- 标准: Mon-Fri 08:00-12:00, 13:00-17:00; Sat-Sun off.

## Resources

| Resource |
| --- |
| 冯达 |
| 待定 |

## Schedule

| ID | WBS | Task | Type | Duration | Start | Finish | Predecessors | Complete | Remaining | Total slack | Free slack | Constraint | Resources | Work | Actual work |
| --- | --- | --- | --- | --- | --- | --- | --- | --- | --- | --- | --- | --- | --- | --- | --- |
| 1 | 1 | **Scada Service** |  | 22d | 2015-12-07 A | 2016-01-05 |  | 23% | 17d | 0d |  |  | 冯达 | 176h | 40h |
| 2 | 1.1 | 通用RMI接口定义 |  | 3d | 2015-12-07 A | 2015-12-09 A |  | 100% |  |  |  | finish no earlier than 2015-12-09 |  |  |  |
| 3 | 1.2 | GAS模块RMI接口定义 |  | 2d | 2015-12-10 A | 2015-12-11 A | 2 | 100% |  |  |  | start no earlier than 2015-12-10 |  |  |  |
| 4 | 1.3 | 开放给WebApp的接口定义 |  | 2d | 2015-12-14 | 2015-12-15 | 3 |  |  | 0d |  |  |  |  |  |
| 5 | 1.4 | Cached Data存取 |  | 2d | 2015-12-16 | 2015-12-17 | 4 |  |  | 0d |  |  |  |  |  |
| 6 | 1.5 | Alarm配置表 |  | 2d | 2015-12-18 | 2015-12-21 | 5 |  |  | 0d |  |  |  |  |  |
| 7 | 1.6 | 聚集配置表 |  | 2d | 2015-12-22 | 2015-12-23 | 6 |  |  | 0d |  |  |  |  |  |
| 8 | 1.7 | 聚集计算 |  | 2d | 2015-12-24 | 2015-12-25 | 7 |  |  | 0d |  |  |  |  |  |
| 9 | 1.8 | 报警计算 |  | 2d | 2015-12-28 | 2015-12-29 | 8 |  |  | 0d |  |  |  |  |  |
| 10 | 1.9 | 数据入库 |  | 2d | 2015-12-30 | 2015-12-31 | 9 |  |  | 0d |  |  |  |  |  |
| 11 | 1.10 | Redis简单Cache应用 |  | 1d | 2016-01-01 | 2016-01-01 | 10 |  |  | 0d |  |  |  |  |  |
| 12 | 1.11 | MQ集成 |  | 2d | 2016-01-04 | 2016-01-05 | 11 |  |  | 0d |  |  |  |  |  |
| 13 | 2 | **气站采集模块** |  | 10d? | 2016-01-06 | 2016-01-19 |  |  |  | 0d |  |  | 冯达 | 80h |  |
| 14 | 2.1 | 通讯协议双方确认 |  | 4d | 2016-01-06 | 2016-01-11 | 12 |  |  | 0d |  |  |  |  |  |
| 15 | 2.2 | 地址和TAG映射配置实现 |  | 2d | 2016-01-12 | 2016-01-13 | 14 |  |  | 0d |  |  |  |  |  |
| 16 | 2.3 | Socket通讯联调 |  | 3d | 2016-01-14 | 2016-01-18 | 15 |  |  | 0d |  |  |  |  |  |
| 17 | 2.4 | 与Scada Service集成 |  | 1d | 2016-01-19 | 2016-01-19 | 16 |  |  | 0d |  |  |  |  |  |
| 18 | 2.5 | 模拟器开发 | milestone | 0d? | 2016-01-19 | 2016-01-19 | 17 |  |  | 0d |  |  |  |  |  |
| 19 | 3 | **WebApp** |  | 28d | 2016-01-01 | 2016-02-09 |  |  |  | 1d |  |  |  | 280h |  |
| 20 | 3.1 | **WebCore** |  | 15d | 2016-01-20 | 2016-02-09 |  |  |  | 0d |  |  | 待定 | 120h |  |
| 21 | 3.1.1 | 配置信息接口 |  | 5d | 2016-01-20 | 2016-01-26 | 18 |  |  | 0d |  |  |  |  |  |
| 22 | 3.1.2 | 权限控制服务 |  | 5d | 2016-01-27 | 2016-02-02 | 21 |  |  | 0d |  |  |  |  |  |
| 23 | 3.1.3 | 历史数据读取 |  | 5d | 2016-02-03 | 2016-02-09 | 22 |  |  | 0d |  |  |  |  |  |
| 24 | 3.2 | **WebMMI** |  | 20d | 2016-01-01 | 2016-01-28 |  |  |  | 9d |  |  | 待定 | 160h |  |
| 25 | 3.2.1 | 集成AdminLTE |  | 1d | 2016-01-01 | 2016-01-01 |  |  |  | 5d | 0d | start no earlier than 2016-01-01 |  |  |  |
| 26 | 3.2.2 | 权限控制界面 |  | 3d | 2016-01-04 | 2016-01-06 | 25 |  |  | 9d | 0d |  |  |  |  |
| 27 | 3.2.3 | 登录界面重构 |  | 1d | 2016-01-07 | 2016-01-07 | 26 |  |  | 9d | 0d |  |  |  |  |
| 28 | 3.2.4 | Dashboard全国地图 |  | 3d | 2016-01-08 | 2016-01-12 | 27 |  |  | 9d | 0d |  |  |  |  |
| 29 | 3.2.5 | LNG监控界面 |  | 10d | 2016-01-13 | 2016-01-26 | 28 |  |  | 9d | 0d |  |  |  |  |
| 30 | 3.2.6 | 监控指标曲线表示 |  | 2d | 2016-01-27 | 2016-01-28 | 29 |  |  | 9d |  |  |  |  |  |

Notes:
- 1: 负责计算、聚集、报警、存储、缓存scada 数据

| ID | WBS | Task | Duration | Start | Finish | Predecessors | Total slack | Free slack | Constraint | Resources | Work |
| --- | --- | --- | --- | --- | --- | --- | --- | --- | --- | --- | --- |
| 31 | 4 | **电容监控工作内容** | 7d | 2015-12-21 | 2015-12-29 |  | 31d |  |  | 待定 | 56h |
| 32 | 4.1 | 百度地图集成 | 1d | 2015-12-21 | 2015-12-21 |  | 33d | 0d | start no earlier than 2015-12-21 |  |  |
| 33 | 4.2 | 实时地图信息方向、鼠标悬停等功能 | 1d | 2015-12-22 | 2015-12-22 | 32 | 33d | 0d |  |  |  |
| 34 | 4.3 | 历史轨迹信息展示 | 3d | 2015-12-23 | 2015-12-25 | 33 | 33d |  |  |  |  |
| 35 | 4.4 | 实时曲线展示周期可配置 | 2d | 2015-12-28 | 2015-12-29 | 34 | 31d |  |  |  |  |
