# 南轨综合监控项目计划

Schedule from MS Project, 2017-11-15 to 2018-03-30, A marks actual dates.
avp

## Calendars

- 标准: Mon-Fri 08:00-12:00, 13:00-17:00; Sat-Sun off.

## Resources

| Resource |
| --- |
| 张关举 |
| 阚文第 |
| 冯达 |
| 王国清 |
| 郭淦 |
| 戚悦 |
| 吴问学 |
| 南轨 |
| Kemp |
| 姜健鹏 |

## Schedule

| ID | WBS | Task | Type | Duration | Start | Finish | Predecessors | Complete | Remaining | Total slack | Resources | Work | Actual work |
| --- | --- | --- | --- | --- | --- | --- | --- | --- | --- | --- | --- | --- | --- |
| 1 | 1 | **综合监控（AVP）** |  | 98d? | 2017-11-15 A | 2018-03-30 |  | 9% | 88.81d? | 0d |  | 2032h | 288h |
| 2 | 1.1 | **需求分析** |  | 33d | 2017-11-15 A | 2017-12-29 |  | 63% | 12.16d | 0d |  | 456h | 288h |
| 3 | 1.1.1 | 历史库规格书 | manual | 12d | 2017-11-15 A | 2017-11-30 A |  | 100% |  |  | 张关举 | 96h | 96h |
| 4 | 1.1.2 | 实时库规格书 | manual | 12d | 2017-11-15 A | 2017-11-30 A |  | 100% |  |  | 阚文第 | 96h | 96h |
| 5 | 1.1.3 | 中间件规格书 | manual | 12d | 2017-11-15 A | 2017-11-30 A |  | 100% |  |  | 冯达 | 96h | 96h |
| 6 | 1.1.4 | 系统级用户需求 | manual | 21d | 2017-12-01 | 2017-12-29 |  |  |  |  | 南轨 | 168h |  |
| 7 | 1.2 | **系统设计** |  | 98d? | 2017-11-15 | 2018-03-30 |  |  |  | 0d |  | 1576h |  |
| 8 | 1.2.1 | **系统概要设计1.0** |  | 12d | 2017-11-15 | 2017-11-30 |  |  |  |  | 王国清 | 96h |  |
| 9 | 1.2.1.1 | 系统服务 | manual | 1d? | 2017-11-15 | 2017-11-15 |  |  |  |  |  |  |  |
| 10 | 1.2.2 | **模块概要设计** |  | 95d? | 2017-11-20 | 2018-03-30 |  |  |  | 0d |  | 1480h |  |
| 11 | 1.2.2.1 | **实时库** |  | 80d | 2017-12-11 | 2018-03-30 | 4 |  |  | 0d |  | 408h |  |
| 12 | 1.2.2.1.1 | 模块定义 | manual | 10d | 2017-12-11 | 2017-12-22 |  |  |  |  | 阚文第 [50%] | 40h |  |
| 13 | 1.2.2.1.2 | 建模 | manual | 28d | 2017-12-25 | 2018-01-31 | 12 |  |  |  | 阚文第 [50%] | 112h |  |
| 14 | 1.2.2.1.3 | redis3.2剪裁 | manual | 7d | 2018-02-01 | 2018-02-09 | 13 |  |  |  | 阚文第 | 56h |  |
| 15 | 1.2.2.1.4 | 点表装载 | manual | 25d | 2018-02-26 | 2018-03-30 |  |  |  |  | 阚文第 | 200h |  |
| 16 | 1.2.2.2 | **系统概要设计2.0** |  | 10d | 2017-12-25 | 2018-01-05 |  |  |  | 0d |  |  |  |
| 17 | 1.2.2.2.1 | **系统架构设计** |  | 10d | 2017-12-25 | 2018-01-05 |  |  |  |  |  |  |  |
| 18 | 1.2.2.2.1.1 | 权限 | manual | 1d | 2017-12-25 | 2017-12-25 |  |  |  |  |  |  |  |
| 19 | 1.2.2.2.1.2 | 集群设计 | manual | 1d? | 2017-12-25 | 2017-12-25 |  |  |  |  |  |  |  |
| 20 | 1.2.2.3 | **历史库** |  | 65d? | 2017-12-11 | 2018-03-09 | 3 |  |  | 0d |  | 360h |  |
| 21 | 1.2.2.3.1 | 模块定义 | manual | 40d | 2017-12-11 | 2018-02-02 |  |  |  |  | 张关举 [50%] | 160h |  |
| 22 | 1.2.2.3.2 | influxdb1.5剪裁 | manual | 25d | 2018-02-05 | 2018-03-09 | 21 |  |  |  | 姜健鹏 | 200h |  |
| 23 | 1.2.2.3.3 | 接口设计（CRUD） | manual | 1d | 2017-12-11 | 2017-12-11 |  |  |  |  |  |  |  |
| 24 | 1.2.2.3.4 | 车站主从数据同步 | manual | 1d? | 2017-12-11 | 2017-12-11 |  |  |  |  |  |  |  |
| 25 | 1.2.2.3.5 | 中心数据同步 | manual | 1d? | 2017-12-11 | 2017-12-11 |  |  |  |  |  |  |  |

Notes:
- 11: 接口代理
- 12: 模块定义，核心功能描述
- 16: 主从切换、权限配置、哨兵监控
- 17: 架构形式确认，类库、版本、开发语言

| ID | WBS | Task | Type | Duration | Start | Finish | Predecessors | Total slack | Resources | Work |
| --- | --- | --- | --- | --- | --- | --- | --- | --- | --- | --- |
| 26 | 1.2.2.4 | **中间件** |  | 52d? | 2017-11-30 | 2018-02-12 | 5 | 0d |  | 208h |
| 27 | 1.2.2.4.1 | 概要设计文档 | manual | 52d | 2017-12-01 | 2018-02-12 |  |  | 冯达 [50%] | 208h |
| 28 | 1.2.2.4.2 | 配置装载 | manual | 1d? | 2017-11-30 | 2017-12-01 |  |  |  |  |
| 29 | 1.2.2.4.3 | 接口设计 | manual | 1d? | 2017-11-30 | 2017-12-01 |  |  |  |  |
| 30 | 1.2.2.4.4 | 消息点对点转发 | manual | 1d? | 2017-11-30 | 2017-12-01 |  |  |  |  |
| 31 | 1.2.2.4.5 | TOPIC订阅/发布 | manual | 1d? | 2017-11-30 | 2017-12-01 |  |  |  |  |
| 32 | 1.2.2.4.6 | **系统** |  | 1d? | 2017-11-30 | 2017-12-01 |  | 0d |  |  |
| 33 | 1.2.2.4.6.1 | 主从同步 | manual | 1d? | 2017-11-30 | 2017-12-01 |  |  |  |  |
| 34 | 1.2.2.4.6.2 | 优先级 | manual | 1d? | 2017-11-30 | 2017-12-01 |  |  |  |  |
| 35 | 1.2.2.4.6.3 | 监控接口和界面设计 | manual | 1d? | 2017-11-30 | 2017-12-01 |  |  |  |  |
| 36 | 1.2.2.4.7 | **跨域** |  | 1d? | 2017-11-30 | 2017-12-01 |  | 0d |  |  |
| 37 | 1.2.2.4.7.1 | 路由转发 | manual | 1d? | 2017-11-30 | 2017-12-01 |  |  |  |  |
| 38 | 1.2.2.5 | **工具集** |  | 86d | 2017-12-01 | 2018-03-30 |  | 0d |  | 296h |
| 39 | 1.2.2.5.1 | 配置库1.0 | manual | 6d | 2017-12-01 | 2017-12-08 |  |  | 戚悦; 郭淦 | 96h |
| 40 | 1.2.2.5.2 | **界面设计** |  | 25d | 2018-02-26 | 2018-03-30 | 39 | 0d |  | 200h |
| 41 | 1.2.2.5.2.1 | 配点界面设计文档 | manual | 25d | 2018-02-26 | 2018-03-30 |  |  | 戚悦 | 200h |
| 42 | 1.2.2.6 | **配置库** |  | 25d | 2018-02-26 | 2018-03-30 |  | 0d |  | 200h |
| 43 | 1.2.2.6.1 | 概要设计 | manual | 10d | 2018-02-26 | 2018-03-09 |  |  | 郭淦 | 80h |
| 44 | 1.2.2.6.2 | 数据库封装 | manual | 10d | 2018-03-12 | 2018-03-23 | 43 |  | 郭淦 | 80h |
| 45 | 1.2.2.6.3 | 数据库同步 | manual | 5d | 2018-03-26 | 2018-03-30 | 44 |  | 郭淦 | 40h |
| 46 | 1.2.2.7 | 应用服务 | manual | 64d | 2017-12-01 | 2018-02-28 |  |  |  |  |
| 47 | 1.2.2.8 | **HMI** |  | 1d? | 2017-11-20 | 2017-11-20 |  | 0d |  | 8h |
| 48 | 1.2.2.8.1 | 功能开发 | manual | 1d? | 2017-11-20 | 2017-11-20 |  |  | 吴问学 | 8h |
| 49 | 1.2.2.9 | FEP | manual | 1d | 2017-11-20 | 2017-11-20 |  |  |  |  |
| 50 | 1.2.3 | 模块接口设计 | manual | 1d? | 2017-11-15 | 2017-11-15 |  |  |  |  |
| 51 | 1.2.4 | 模块数据库设计 | manual | 1d? | 2017-11-15 | 2017-11-15 |  |  |  |  |
| 52 | 1.2.5 | 模块详细设计 | manual | 1d? | 2017-11-15 | 2017-11-15 |  |  |  |  |

Notes:
- 39: 1. 理解南瑞数据库和系统需求 / 2. 输出字段注释和关联
- 40: 配置库 / 历史库 / 事件查看 / 系统管理（watchdog查看，主从管理） / NMS
- 46: PSCADA、BAS、FAS、CCTV、PA、ATS、ACS

| ID | WBS | Task | Type | Duration | Start | Finish | Total slack | Resources |
| --- | --- | --- | --- | --- | --- | --- | --- | --- |
| 53 | 1.3 | **软件开发（Spring1.1）** |  | 1d? | 2018-01-02 | 2018-01-02 |  |  |
| 54 | 1.3.1 | 实时库 | milestone, manual | 0d? | 2018-01-02 | 2018-01-02 |  | 阚文第 |
| 55 | 1.3.2 | 历史库 | milestone, manual | 0d? | 2018-01-02 | 2018-01-02 |  | 张关举 |
| 56 | 1.3.3 | 中间件 | milestone, manual | 0d? | 2018-01-02 | 2018-01-02 |  | Kemp |
| 57 | 1.3.4 | **工具集** |  | 1d? | 2018-01-02 | 2018-01-02 | 0d |  |
| 58 | 1.3.4.1 | 配置库 | manual | 1d? | 2018-01-02 | 2018-01-02 |  |  |
| 59 | 1.3.5 | 系统管理（HA/WatchDog) | milestone, manual | 0d? | 2018-01-02 | 2018-01-02 |  | 阚文第 |

Notes:
- 59: HA-SDK，哨兵监控，看门狗
